# Разработка карты города

How a schedule from MS Project changed from version to version. A marks actual dates.

## Version 1 (data date 2022-05-10, saved 2022-04-12, file lab_05_task_1.mpp)

Note of the change: Add project labs and wip cocomo lab

| ID | WBS | Task | Duration | Start | Finish | Predecessors | Complete | Total float | Constraint |
| --- | --- | --- | --- | --- | --- | --- | --- | --- | --- |
| 1 |  | Начало работы | 0d | 2022-03-01 09:00 A | 2022-03-01 09:00 A |  | 100% |  |  |
| 2 | 2 | **Создание интерфейса** | 67.53d | 2022-03-01 09:00 A | 2022-06-09 14:12 | 1 | 85% | 0d |  |
| 3 | 2.1 | **Разработка дизайна интерфейса** | 25.75d | 2022-03-01 09:00 A | 2022-04-06 16:00 A |  | 100% |  |  |
| 4 |  | Разработка 2D графических элементов | 3.7w | 2022-03-01 09:00 A | 2022-03-28 18:00 A |  | 100% |  |  |
| 5 |  | Разработка 3D графических элементов | 2w | 2022-03-01 09:00 A | 2022-03-16 12:00 A | 4SS | 100% |  |  |
| 6 |  | Создание заставки | 3w | 2022-03-16 12:00 A | 2022-04-06 16:00 A | 5 | 100% |  |  |
| 7 |  | Программирование интерфейса | 1.5w | 2022-05-31 09:12 | 2022-06-09 14:12 | 3, 12 |  | 0d |  |
| 8 | 3 | **Построение базы объектов** | 82.6d | 2022-03-11 16:00 A | 2022-07-13 11:49 |  | 46% | 2.61d |  |
| 9 |  | Анализ и построение структуры базы объектов | 2w | 2022-03-11 16:00 A | 2022-03-25 18:00 A |  | 100% |  |  |
| 10 |  | Программирование средств обработки базы объектов | 2.47w | 2022-03-28 09:00 A | 2022-04-13 11:49 A | 9 | 100% |  |  |
| 11 |  | Наполнение базы объектов | 12w | 2022-04-13 11:49 A | 2022-07-13 11:49 | 10 | 26% | 2.61d |  |
| 12 | 4 | **Создание ядра GIS** | 60.03d | 2022-03-01 09:00 A | 2022-05-31 09:12 |  | 76% | 0d |  |
| 13 |  | Анализ и проектирование ядра | 1.5w | 2022-03-01 09:00 A | 2022-03-11 16:00 A |  | 100% |  |  |
| 14 |  | Создание модели ядра | 2.02w | 2022-03-11 16:00 A | 2022-03-25 16:49 A | 13 | 100% |  |  |
| 15 |  | Тестирование модели ядра | 1w | 2022-03-25 16:49 A | 2022-04-01 16:49 A | 14 | 100% |  |  |
| 16 |  | Создание рабочей версии ядра | 7.41w | 2022-04-01 16:49 A | 2022-05-31 09:12 | 15 | 62% | 0d |  |
| 17 |  | Создание мультимедиа-наполнения | 6w | 2022-03-09 09:00 A | 2022-06-23 11:00 | 3 | 13% | 16.71d |  |
| 18 |  | Создание справочной системы | 2w | 2022-06-21 14:12 | 2022-07-05 14:12 | 7 |  | 8.44d |  |
| 19 | 7 | **Создание руководства пользователя** | 17d | 2022-05-26 14:12 | 2022-06-21 14:12 | 7FS-10d |  | 0d |  |
| 20 |  | Разработка дизайна руководства | 1w | 2022-05-26 14:12 | 2022-06-02 14:12 |  |  | 0d |  |
| 21 |  | Написание руководства пользователя | 3w | 2022-05-30 14:12 | 2022-06-21 14:12 | 20SS+2d |  | 0d |  |
| 22 | 8 | **Создание web-сайта и поддержка** | 33.44d | 2022-05-30 14:12 | 2022-07-15 17:41 |  |  | 0d |  |
| 23 |  | Разработка структуры сайта | 1d | 2022-05-30 14:12 | 2022-05-31 14:12 | 21SS |  | 0d |  |
| 24 |  | Разработка дизайна сайта | 1.4w | 2022-05-31 14:12 | 2022-06-09 14:12 | 23 |  | 0d |  |
| 25 |  | Наполнение сайта | 3w | 2022-06-09 14:12 | 2022-07-01 16:12 | 24 |  | 0d |  |
| 26 |  | Тестирование сайта | 3.04w | 2022-06-24 16:12 | 2022-07-15 17:41 | 25FS-1w |  | 0d |  |
| 27 |  | Сдача в эксплуатацию | 0d | 2022-07-15 17:41 | 2022-07-15 17:41 | 26 |  | 0d |  |
| 28 | 10 | **Совещание** | 19.12d | 2022-03-02 09:00 A | 2022-03-30 10:00 A |  | 100% |  |  |
| 29 |  | Совещание 1 | 1h | 2022-03-02 09:00 A | 2022-03-02 10:00 A |  | 100% |  | start no earlier than 2022-03-02 09:00 |
| 30 |  | Совещание 2 | 1h | 2022-03-09 09:00 A | 2022-03-09 10:00 A |  | 100% |  | start no earlier than 2022-03-09 09:00 |
| 31 |  | Совещание 3 | 1h | 2022-03-16 09:00 A | 2022-03-16 10:00 A |  | 100% |  | start no earlier than 2022-03-16 09:00 |
| 32 |  | Совещание 4 | 1h | 2022-03-23 09:00 A | 2022-03-23 10:00 A |  | 100% |  | start no earlier than 2022-03-23 09:00 |
| 33 |  | Совещание 5 | 1h | 2022-03-30 09:00 A | 2022-03-30 10:00 A |  | 100% |  | start no earlier than 2022-03-30 09:00 |
| 34 | 11 | **Презентация** | 65.25d | 2022-04-04 09:00 A | 2022-07-11 11:00 |  | 43% | 0d |  |
| 35 |  | Презентация 1 | 2h | 2022-04-04 09:00 A | 2022-04-04 11:00 A |  | 100% |  | start no earlier than 2022-04-04 09:00 |
| 36 |  | Презентация 2 | 2h | 2022-04-18 09:00 A | 2022-04-18 11:00 A |  | 100% |  | start no earlier than 2022-04-18 09:00 |
| 37 |  | Презентация 3 | 2h | 2022-05-02 09:00 A | 2022-05-02 11:00 A |  | 100% |  | start no earlier than 2022-05-02 09:00 |
| 38 |  | Презентация 4 | 2h | 2022-05-16 09:00 | 2022-05-16 11:00 |  |  |  | start no earlier than 2022-05-16 09:00 |
| 39 |  | Презентация 5 | 2h | 2022-05-30 09:00 | 2022-05-30 11:00 |  |  |  | start no earlier than 2022-05-30 09:00 |
| 40 |  | Презентация 7 | 2h | 2022-06-27 09:00 | 2022-06-27 11:00 |  |  |  | start no earlier than 2022-06-27 09:00 |
| 41 |  | Презентация 8 | 2h | 2022-07-11 09:00 | 2022-07-11 11:00 |  |  |  | start no earlier than 2022-07-11 09:00 |

## Version 2 (data date 2022-05-10, saved 2022-04-12, file lab_05_task_3.mpp)

Note of the change: Add project labs and wip cocomo lab

Last finish 2022-07-15 → 2022-07-13 (-2d).

Added:

| ID | Task | Duration | Start | Finish |
| --- | --- | --- | --- | --- |
| 25 | **Работа с документацией** | 46.35d | 2022-03-25 10:11 | 2022-06-03 13:00 |

Changed:

| ID | Task | Start | Finish | Duration | Complete | Total float | Other |
| --- | --- | --- | --- | --- | --- | --- | --- |
| 2 | **Дизайн** |  | 2022-06-09 14:12 → 2022-04-13 15:00 (-57d) | 67.53d → 30.62d | 85% → 71% | 0d → 21.89d | was named Создание интерфейса |
| 7 | Разработка дизайна руководства | 2022-05-26 14:12 → 2022-03-23 10:11 (-64d) | 2022-06-02 14:12 → 2022-03-30 17:41 (-64d) |  |  | 0d → -34.15d |  |
| 8 | Разработка дизайна сайта | 2022-05-31 14:12 → 2022-03-28 10:11 (-64d) | 2022-06-09 14:12 → 2022-04-13 15:00 (-57d) | 1.4w → 2.47w |  | 0d → 21.89d |  |
| 9 | **Программирование** |  | 2022-07-13 11:49 → 2022-06-09 14:12 (-34d) | 82.6d → 59.78d | 46% → 61% | 2.61d → 22.83d | was named Построение базы объектов |
| 11 | Программирование интерфейса | 2022-05-31 09:12 → 2022-05-11 09:00 (-20d) | 2022-06-09 14:12 → 2022-05-20 13:00 (-20d) |  |  | 0d → -38.5d |  |
| 13 | Создание рабочей версии ядра |  | 2022-05-31 09:12 → 2022-06-09 14:12 (+9d) | 7.41w → 8.84w | 62% → 52% | 0d → 22.83d |  |
| 14 | **Проектирование** |  | 2022-05-31 09:12 → 2022-03-28 10:11 (-64d) | 60.03d → 18.15d | 76% → 95% | 0d → -0.15d | was named Создание ядра GIS |
| 16 | Разработка структуры сайта | 2022-05-30 14:12 → 2022-03-25 10:11 (-66d) | 2022-05-31 14:12 → 2022-03-28 10:11 (-64d) |  |  | 0d → -34.15d |  |
| 18 | **Работа с данными** | 2022-05-26 14:12 → 2022-03-09 09:00 A (-78d) | 2022-06-21 14:12 → 2022-07-13 11:49 (+22d) | 17d → 85.35d | 0% → 19% |  | was named Создание руководства пользователя |
| 21 | Наполнение сайта | 2022-06-09 14:12 → 2022-05-04 14:00 (-36d) | 2022-07-01 16:12 → 2022-05-27 17:00 (-35d) |  |  | 0d → 9.01d |  |
| 22 | **Тестирование** | 2022-05-30 14:12 → 2022-03-25 16:49 A (-66d) | 2022-07-15 17:41 → 2022-07-01 11:43 (-14d) | 33.44d → 64.49d | 0% → 20% | 0d → 8.01d | was named Создание web-сайта и поддержка |
| 23 | Тестирование сайта | 2022-06-24 16:12 → 2022-06-02 15:23 (-22d) | 2022-07-15 17:41 → 2022-07-01 11:43 (-14d) | 3.04w → 3.93w |  | 0d → 8.01d |  |
| 26 | Создание справочной системы | 2022-06-21 14:12 → 2022-05-20 14:00 (-32d) | 2022-07-05 14:12 → 2022-06-03 13:00 (-32d) |  |  | 8.44d → 26.85d |  |
| 27 | Написание руководства пользователя | 2022-05-30 14:12 → 2022-03-25 10:11 (-66d) | 2022-06-21 14:12 → 2022-04-15 11:11 (-67d) |  |  | 0d → -34.15d |  |
| 28 | Сдача в эксплуатацию | 2022-07-15 17:41 → 2022-07-01 11:43 (-14d) | 2022-07-15 17:41 → 2022-07-01 11:43 (-14d) |  |  | 0d → 8.01d |  |
